# Schedule

How a schedule from MS Project changed from version to version. A marks actual dates.

## Version 1 (saved 2014-09-19)

Note of the change: tasks

| ID | WBS | Task | Duration | Start | Finish | Predecessors | Total float | Constraint |
| --- | --- | --- | --- | --- | --- | --- | --- | --- |
| 1 | 1 | **Глобал** | 156d | 2014-09-19 | 2015-04-24 |  | 49d |  |
| 2 | 1.1 | **Охранная часть** | 22d | 2014-09-19 | 2014-10-20 |  | 183d |  |
| 3 |  | Сбор требований | 2d | 2014-09-19 | 2014-09-22 |  | 183d |  |
| 4 |  | Реализация | 10d | 2014-09-23 | 2014-10-06 | 3 | 183d |  |
| 5 |  | Сбор стенда. Тестирование и отладка | 10d | 2014-10-07 | 2014-10-20 | 4 | 183d |  |
| 6 | 1.2 | **СКД** | 56d | 2014-09-19 | 2014-12-05 |  | 149d |  |
| 7 |  | Сбор требований | 2d | 2014-09-19 | 2014-09-22 |  | 183d | start no earlier than 2014-09-19 |
| 8 |  | Реализация | 10d | 2014-09-23 | 2014-10-06 | 7 | 183d |  |
| 9 |  | Сбор стенда. Тестирование и отладка | 10d | 2014-10-07 | 2014-10-20 | 8 | 183d |  |
| 10 | 1.2.4 | **МПТ** | 35d | 2014-10-20 | 2014-12-05 |  | 149d |  |
| 11 |  | Сборка стенда | 3d | 2014-10-20 | 2014-10-22 |  | 176d | start no earlier than 2014-10-19 |
| 12 |  | Тестирование и отладка | 5d | 2014-10-23 | 2014-10-29 | 11 | 176d |  |
| 13 | 1.2.4.3 | **НС** | 8d | 2014-10-31 | 2014-11-11 |  | 167d |  |
| 14 |  | Сборка стенда | 3d | 2014-10-31 | 2014-11-04 |  | 167d | start no earlier than 2014-10-31 |
| 15 |  | Тестирование и отладка | 5d | 2014-11-05 | 2014-11-11 | 14 | 167d |  |
| 16 | 1.2.4.4 | **Автономность работы автоматики** | 20d | 2014-11-10 | 2014-12-05 |  | 149d |  |
| 17 |  | Перенос части автоматической логики с ГК на КАУ | 10d | 2014-11-10 | 2014-11-21 |  | 149d | start no earlier than 2014-11-08 |
| 18 |  | Тестирование и отладка | 10d | 2014-11-24 | 2014-12-05 | 17 | 149d |  |
| 19 |  | Реализация взаимодействия всех подсистем | 100d | 2014-12-08 | 2015-04-24 |  | 49d | start no earlier than 2014-12-06 |
| 20 | 2 | **СКД для RVI** | 167d | 2014-09-19 | 2015-05-11 |  | 38d |  |
| 21 | 2.1 | **Релиз 1** | 67d | 2014-09-19 | 2014-12-22 |  | 138d |  |
| 22 |  | Реализация минимальных требование на Релиз 1 | 20d | 2014-09-19 | 2014-10-16 |  | 138d |  |
| 23 |  | Тестирование и отладка | 20d | 2014-10-17 | 2014-11-13 | 22 | 138d |  |
| 24 |  | Интеграция с 1С | 20d | 2014-11-14 | 2014-12-11 | 23 | 138d |  |
| 25 |  | Экспорт отчета Т-13 | 7d | 2014-12-12 | 2014-12-22 | 24 | 138d |  |
| 26 | 2.2 | **Релиз 2** | 40d | 2014-12-22 | 2015-02-13 |  | 99d |  |
| 27 |  | Реализация | 20d | 2014-12-22 | 2015-01-16 |  | 99d | start no earlier than 2014-12-22 |
| 28 |  | Тестирование и отладка | 20d | 2015-01-19 | 2015-02-13 | 27 | 99d |  |
| 29 | 2.3 | **Релиз 3** | 40d | 2015-02-12 | 2015-04-08 |  | 61d |  |
| 30 |  | Реализация | 20d | 2015-02-12 | 2015-03-11 |  | 61d | start no earlier than 2015-02-12 |
| 31 |  | Тестирование и отладка | 20d | 2015-03-12 | 2015-04-08 | 30 | 61d |  |
| 32 | 2.4 | **Сценарии управления** | 167d | 2014-09-19 | 2015-05-11 |  | 38d |  |
| 33 |  | Выполнение СУ по событию в журнале | 5d | 2014-09-19 | 2014-09-25 |  | 38d |  |
| 34 |  | Выполнение СУ по событию по состоянию объект | 5d | 2014-09-26 | 2014-10-02 | 33 | 38d |  |
| 35 |  | Управление объектами ГК | 5d | 2014-10-03 | 2014-10-09 | 34 | 38d |  |
| 36 |  | Управление объектами СКД RVI | 5d | 2014-10-10 | 2014-10-16 | 35 | 38d |  |
| 37 |  | Управление объектами видео RVI-VSS | 5d | 2014-10-17 | 2014-10-23 | 36 | 38d |  |
| 38 |  | Сбор требований к типовым сценариям управления | 5d | 2014-10-24 | 2014-10-30 | 37 | 38d |  |
| 39 |  | Реализация типовых сценариев управления | 5d | 2014-10-31 | 2014-11-06 | 38 | 38d |  |
| 40 |  | Сбор стенда для тестирования | 2d | 2014-11-07 | 2014-11-10 | 39 | 38d |  |
| 41 |  | Тестирование и отладка | 20d | 2014-11-11 | 2014-12-08 | 40 | 38d |  |
| 42 |  | Функции управления коллекциями | 10d | 2014-12-09 | 2014-12-22 | 41 | 38d |  |
| 43 |  | Развитие номенклатуры функций автоматизации | 100d | 2014-12-23 | 2015-05-11 | 42 | 38d |  |
| 44 | 3 | **Сценарии управления пользовательским интерфейсом** | 205d | 2014-09-19 | 2015-07-02 |  | 0d |  |
| 45 |  | Развитие элементов управления на макетах | 20d | 2014-09-19 | 2014-10-16 |  | 0d |  |
| 46 |  | Публикация свойства элементов управления, которыми можно управлять | 10d | 2014-10-17 | 2014-10-30 | 45 | 0d |  |
| 47 |  | Функции управления элементами интерфейса | 10d | 2014-10-31 | 2014-11-13 | 46 | 0d |  |
| 48 |  | Сценарии управления, выполняемые на клиенте | 10d | 2014-11-14 | 2014-11-27 | 47 | 0d |  |
| 49 |  | Дочерние окна макетов | 10d | 2014-11-28 | 2014-12-11 | 48 | 0d |  |
| 50 |  | Связывание элементов управления с аргументами процедуры | 10d | 2014-12-12 | 2014-12-25 | 49 | 0d |  |
| 51 |  | Сбор требований к типовым сценариям управления | 5d | 2014-12-26 | 2015-01-01 | 50 | 0d |  |
| 52 |  | Реализация типовых сценариев управления | 10d | 2015-01-02 | 2015-01-15 | 51 | 0d |  |
| 53 |  | Тестирование и отладка | 20d | 2015-01-16 | 2015-02-12 | 52 | 0d |  |
| 54 |  | Развитие номенклатуры элементов управления и функциий | 100d | 2015-02-13 | 2015-07-02 | 53 | 0d |  |
| 55 |  | Светлая цветовая гамма интерфейса | 30d | 2014-10-23 | 2014-12-03 |  | 151d | start no earlier than 2014-10-23 |
| 56 | 3.12 | **Видео** | 35d | 2014-12-01 | 2015-01-16 |  | 119d |  |
| 57 |  | Разработка требований к сервису RVI-VSS | 5d | 2014-12-01 | 2014-12-05 |  | 119d | start no earlier than 2014-12-01 |
| 58 |  | Реализация взаимодействия с RVI-VSS | 20d | 2014-12-08 | 2015-01-02 | 57 | 119d |  |
| 59 |  | Сценарии управления видеоустройствами | 10d | 2015-01-05 | 2015-01-16 | 58 | 119d |  |

## Version 2 (saved 2014-09-22)

Note of the change: Merge branch 'master' of github.com:xbadcode/Rubezh

Last finish stays 2015-07-02.

Changed:

| ID | Task | Other |
| --- | --- | --- |
| 1 | **Глобал** | resources none → Севастьянов |
| 2 | **Охранная часть** | resources none → Севастьянов |
| 3 | Севастьянов | was named Сбор требований; resources none → Севастьянов |
| 4 | Реализация | resources none → Севастьянов |
| 5 | Сбор стенда. Тестирование и отладка | resources none → Севастьянов |
| 6 | **СКД** | resources none → Севастьянов |
| 7 | Сбор требований | resources none → Севастьянов |
| 8 | Реализация | resources none → Севастьянов |
| 9 | Сбор стенда. Тестирование и отладка | resources none → Севастьянов |
| 10 | **МПТ** | resources none → Севастьянов |
| 11 | Сборка стенда | resources none → Севастьянов |
| 12 | Тестирование и отладка | resources none → Севастьянов |
| 13 | **НС** | resources none → Севастьянов |
| 14 | Сборка стенда | resources none → Севастьянов |
| 15 | Тестирование и отладка | resources none → Севастьянов |
| 16 | **Автономность работы автоматики** | resources none → Севастьянов |
| 17 | Перенос части автоматической логики с ГК на КАУ | resources none → Севастьянов |
| 18 | Тестирование и отладка | resources none → Севастьянов |
| 19 | Реализация взаимодействия всех подсистем | resources none → Казаков; Севастьянов |
| 20 | **СКД для RVI** | resources none → Обычев; Севастьянов |
| 21 | **Релиз 1** | resources none → Обычев; Севастьянов |
| 22 | Реализация минимальных требование на Релиз 1 | resources none → Обычев; Севастьянов |
| 23 | Тестирование и отладка | resources none → Обычев; Севастьянов |
| 24 | Интеграция с 1С | resources none → Обычев; Севастьянов |
| 25 | Экспорт отчета Т-13 | resources none → Обычев; Севастьянов |
| 26 | **Релиз 2** | resources none → Обычев; Севастьянов |
| 27 | Реализация | resources none → Обычев; Севастьянов |
| 28 | Тестирование и отладка | resources none → Обычев; Севастьянов |
| 29 | **Релиз 3** | resources none → Обычев; Севастьянов |
| 30 | Реализация | resources none → Обычев; Севастьянов |
| 31 | Тестирование и отладка | resources none → Обычев; Севастьянов |
| 32 | **Сценарии управления** | resources none → Казаков |
| 33 | Выполнение СУ по событию в журнале | resources none → Казаков |
| 34 | Выполнение СУ по событию по состоянию объект | resources none → Казаков |
| 35 | Управление объектами ГК | resources none → Казаков |
| 36 | Управление объектами СКД RVI | resources none → Казаков |
| 37 | Управление объектами видео RVI-VSS | resources none → Казаков |
| 38 | Сбор требований к типовым сценариям управления | resources none → Казаков |
| 39 | Реализация типовых сценариев управления | resources none → Казаков |
| 40 | Сбор стенда для тестирования | resources none → Казаков |
| 41 | Тестирование и отладка | resources none → Казаков |
| 42 | Функции управления коллекциями | resources none → Казаков |
| 43 | Развитие номенклатуры функций автоматизации | resources none → Казаков |
| 44 | **Сценарии управления пользовательским интерфейсом** | resources none → Севастьянов |
| 45 | Развитие элементов управления на макетах | resources none → Севастьянов; Казаков |
| 46 | Публикация свойства элементов управления, которыми можно управлять | resources none → Севастьянов; Казаков |
| 47 | Функции управления элементами интерфейса | resources none → Севастьянов; Казаков |
| 48 | Сценарии управления, выполняемые на клиенте | resources none → Севастьянов; Казаков |
| 49 | Дочерние окна макетов | resources none → Севастьянов; Казаков |
| 50 | Связывание элементов управления с аргументами процедуры | resources none → Севастьянов; Казаков |
| 51 | Сбор требований к типовым сценариям управления | resources none → Севастьянов; Казаков |
| 52 | Реализация типовых сценариев управления | resources none → Севастьянов; Казаков |
| 53 | Тестирование и отладка | resources none → Севастьянов; Казаков |
| 54 | Развитие номенклатуры элементов управления и функциий | resources none → Севастьянов; Казаков |
| 55 | Светлая цветовая гамма интерфейса | resources none → Обычев |
| 56 | **Видео** | resources none → Казаков; Севастьянов |
| 57 | Разработка требований к сервису RVI-VSS | resources none → Севастьянов |
| 58 | Реализация взаимодействия с RVI-VSS | resources none → Казаков; Севастьянов |
| 59 | Сценарии управления видеоустройствами | resources none → Казаков |

## Version 3 (saved 2014-10-28)

Note of the change: Merge branch 'master' of github.com:xbadcode/Rubezh

Last finish stays 2015-07-02.

Added:

| ID | Task | Duration | Start | Finish | Predecessors | Constraint |
| --- | --- | --- | --- | --- | --- | --- |
| 2 | **Волгодонск** | 55d? | 2014-09-25 | 2014-12-10 |  |  |
| 3 | Тестирование | 18d | 2014-09-25 | 2014-10-20 |  | finish no earlier than 2014-10-20 |
| 4 | Пуско-наладка | 4d | 2014-10-21 | 2014-10-24 | 3 | finish no earlier than 2014-10-24 |
| 5 | **Белоярская АЭС** | 1d? | 2014-11-01 | 2014-11-01 |  |  |
| 6 | Реализация устройств ШУЗ | 7d | 2014-11-03 | 2014-11-11 |  |  |
| 7 | Доработка логики срабатывания | 7d | 2014-11-12 | 2014-11-20 | 6 |  |
| 8 | Испытания на стенде | 14d | 2014-11-21 | 2014-12-10 | 7 |  |

Changed:

| ID | Task | Start | Finish | Duration | Total float | Predecessors | Other |
| --- | --- | --- | --- | --- | --- | --- | --- |
| 1 | **Глобал** |  |  | 156d → 156d? | 49d → 3d |  |  |
| 9 | **Охранная часть** |  | 2014-10-20 → 2014-12-12 (+53d) | 22d → 60.5d | 183d → 144.5d |  |  |
| 10 | Сбор требований |  |  |  | 183d → 193d |  | was named Севастьянов |
| 12 | Сбор стенда. Тестирование и отладка | 2014-10-07 → 2014-11-10 (+34d) | 2014-10-20 → 2014-12-12 (+53d) | 10d → 24.5d | 183d → 144.5d | 11 → none | constraint none → start no earlier than 2014-11-10; resources Севастьянов → ИЦ |
| 15 | Реализация | 2014-09-23 → 2014-10-20 (+27d) | 2014-10-06 → 2014-11-07 (+32d) | 10d → 15d | 183d → 159d | 14 → none | constraint none → finish no earlier than 2014-11-07 |
| 16 | Сбор стенда. Тестирование и отладка | 2014-10-07 → 2014-11-10 (+34d) | 2014-10-20 → 2014-11-21 (+32d) |  | 183d → 159d |  | resources Севастьянов → ИЦ |
| 17 | **МПТ** | 2014-10-20 → 2014-11-10 (+21d) |  | 35d → 20d |  |  |  |
| 18 | Сборка стенда | 2014-10-20 → 2014-11-10 (+21d) | 2014-10-22 → 2014-11-12 (+21d) |  | 176d → 161d |  | constraint start no earlier than 2014-10-19 → start no earlier than 2014-11-10; resources Севастьянов → ИЦ |
| 19 | Тестирование и отладка | 2014-10-23 → 2014-11-13 (+21d) | 2014-10-29 → 2014-11-19 (+21d) |  | 176d → 161d |  |  |
| 20 | **НС** | 2014-10-31 → 2014-11-10 (+10d) | 2014-11-11 → 2014-11-19 (+8d) |  | 167d → 161d |  |  |
| 21 | Сборка стенда | 2014-10-31 → 2014-11-10 (+10d) | 2014-11-04 → 2014-11-12 (+8d) |  | 167d → 161d |  | constraint start no earlier than 2014-10-31 → start no earlier than 2014-11-10; resources Севастьянов → ИЦ |
| 22 | Тестирование и отладка | 2014-11-05 → 2014-11-13 (+8d) | 2014-11-11 → 2014-11-19 (+8d) |  | 167d → 161d |  |  |
| 27 | **СКД для RVI** |  | 2015-05-11 → 2015-04-08 (-33d) | 167d → 144d | 38d → 61d |  |  |
| 39 | **Сценарии управления** |  | 2015-05-11 → 2015-03-19 (-53d) | 167d → 130d | 38d → 75d |  |  |
| 43 | Управление объектами СКД RVI | 2014-10-10 → 2014-12-01 (+52d) | 2014-10-16 → 2014-12-05 (+50d) |  | 38d → 144d | 42 → none | constraint none → start no earlier than 2014-12-01 |
| 44 | Управление объектами видео RVI-VSS | 2014-10-17 → 2014-12-08 (+52d) | 2014-10-23 → 2014-12-12 (+50d) |  | 38d → 144d |  |  |
| 45 | Сбор требований к типовым сценариям управления | 2014-10-24 → 2014-10-13 (-11d) | 2014-10-30 → 2014-10-17 (-13d) |  | 38d → 179d | 44 → none | constraint none → start no earlier than 2014-10-11 |
| 46 | Реализация типовых сценариев управления | 2014-10-31 → 2014-10-20 (-11d) | 2014-11-06 → 2014-10-24 (-13d) |  | 38d → 179d |  |  |
| 47 | Сбор стенда для тестирования | 2014-11-07 → 2014-11-10 (+3d) | 2014-11-10 → 2014-11-11 (+1d) |  | 38d → 167d | 46 → none | constraint none → start no earlier than 2014-11-10; resources Казаков → ИЦ |
| 48 | Тестирование и отладка | 2014-11-11 → 2014-09-29 (-43d) | 2014-12-08 → 2014-10-24 (-45d) |  | 38d → 179d | 47 → none | constraint none → start no earlier than 2014-09-29 |
| 49 | Функции управления коллекциями | 2014-12-09 → 2014-10-13 (-57d) | 2014-12-22 → 2014-10-24 (-59d) |  | 38d → 179d | 48 → none | constraint none → start no earlier than 2014-10-11 |
| 50 | Развитие номенклатуры функций автоматизации | 2014-12-23 → 2014-10-31 (-53d) | 2015-05-11 → 2015-03-19 (-53d) |  | 38d → 75d | 49 → none | constraint none → start no earlier than 2014-10-31 |
| 63 | **Видео** | 2014-12-01 → 2014-12-10 (+9d) | 2015-01-16 → 2015-01-27 (+11d) |  | 119d → 112d |  |  |
| 64 | Разработка требований к сервису RVI-VSS | 2014-12-01 → 2014-12-10 (+9d) | 2014-12-05 → 2014-12-16 (+11d) |  | 119d → 112d |  | constraint start no earlier than 2014-12-01 → start no earlier than 2014-12-10 |
| 65 | Реализация взаимодействия с RVI-VSS | 2014-12-08 → 2014-12-17 (+9d) | 2015-01-02 → 2015-01-13 (+11d) |  | 119d → 112d |  |  |
| 66 | Сценарии управления видеоустройствами | 2015-01-05 → 2015-01-14 (+9d) | 2015-01-16 → 2015-01-27 (+11d) |  | 119d → 112d |  |  |

## Version 4 (saved 2014-10-29)

Note of the change: Merge branch 'master' of github.com:xbadcode/Rubezh

Last finish stays 2015-07-02.

Removed: 44 Управление объектами видео RVI-VSS

Changed:

| ID | Task | Start | Finish | Duration | Total float | Predecessors | Other |
| --- | --- | --- | --- | --- | --- | --- | --- |
| 1 | **Глобал** |  |  | 156d? → 156d | 3d → 36d |  |  |
| 2 | **Волгодонск** |  | 2014-12-10 → 2014-12-17 (+7d) | 55d? → 60d | -1d → 32d |  |  |
| 5 | **Белоярская АЭС** | 2014-11-01 → 2014-11-10 (+9d) | 2014-11-01 → 2014-12-17 (+46d) | 1d? → 28d |  |  |  |
| 6 | Реализация устройств ШУЗ | 2014-11-03 → 2014-11-10 (+7d) | 2014-11-11 → 2014-11-18 (+7d) |  | -28d → 0d |  |  |
| 7 | Доработка логики срабатывания | 2014-11-12 → 2014-11-19 (+7d) | 2014-11-20 → 2014-11-27 (+7d) |  | -28d → 0d |  |  |
| 8 | Испытания на стенде | 2014-11-21 → 2014-11-28 (+7d) | 2014-12-10 → 2014-12-17 (+7d) |  | -28d → 0d |  |  |
| 9 | **Охранная часть** |  | 2014-12-12 → 2014-12-30 (+18d) | 60.5d → 73d | 144.5d → 132d |  |  |
| 12 | Сбор стенда. Тестирование и отладка | 2014-11-10 → 2014-11-19 (+9d) | 2014-12-12 → 2014-12-30 (+18d) | 24.5d → 30d | 144.5d → 132d |  | constraint start no earlier than 2014-11-10 → finish no earlier than 2014-12-30 |
| 13 | **СКД** |  | 2014-12-05 → 2014-12-30 (+25d) | 56d → 73d | 149d → 132d |  |  |
| 16 | Сбор стенда. Тестирование и отладка | 2014-11-10 → 2014-11-19 (+9d) | 2014-11-21 → 2014-12-30 (+39d) | 10d → 30d | 159d → 132d | 15 → none | constraint none → finish no earlier than 2014-12-30 |
| 17 | **МПТ** |  | 2014-12-05 → 2014-12-30 (+25d) | 20d → 37d | 149d → 132d |  |  |
| 18 | Сборка стенда | 2014-11-10 → 2014-11-19 (+9d) | 2014-11-12 → 2014-12-30 (+48d) | 3d → 30d | 161d → 132d |  | constraint start no earlier than 2014-11-10 → finish no earlier than 2014-12-30 |
| 19 | Тестирование и отладка | 2014-11-13 → 2014-11-19 (+6d) | 2014-11-19 → 2014-12-30 (+41d) | 5d → 30d | 161d → 132d | 18 → none | constraint none → finish no earlier than 2014-12-30 |
| 20 | **НС** | 2014-11-10 → 2014-11-19 (+9d) | 2014-11-19 → 2014-12-30 (+41d) | 8d → 30d | 161d → 132d |  |  |
| 21 | Сборка стенда | 2014-11-10 → 2014-11-19 (+9d) | 2014-11-12 → 2014-12-30 (+48d) | 3d → 30d | 161d → 132d |  | constraint start no earlier than 2014-11-10 → finish no earlier than 2014-12-30 |
| 22 | Тестирование и отладка | 2014-11-13 → 2014-11-19 (+6d) | 2014-11-19 → 2014-12-30 (+41d) | 5d → 30d | 161d → 132d | 21 → none | constraint none → finish no earlier than 2014-12-30 |
| 43 | Управление объектами СКД RVI |  | 2014-12-05 → 2014-12-18 (+13d) | 5d → 14d | 144d → 140d |  |  |
| 46 | Сбор стенда для тестирования | 2014-11-10 → 2014-11-19 (+9d) | 2014-11-11 → 2014-12-30 (+49d) | 2d → 30d | 167d → 132d |  | constraint start no earlier than 2014-11-10 → finish no earlier than 2014-12-30 |

## Version 5 (saved 2014-11-10)

Note of the change: Merge branch 'master' of github.com:xbadcode/Rubezh

Last finish stays 2015-07-02.

Added:

| ID | Task | Duration | Start | Finish | Constraint |
| --- | --- | --- | --- | --- | --- |
| 45 | Разработка документации | 14d | 2014-11-10 | 2014-11-27 | start no earlier than 2014-11-10 |

Changed:

| ID | Task | Start | Finish | Duration | Total float | Predecessors | Other |
| --- | --- | --- | --- | --- | --- | --- | --- |
| 1 | **Глобал** | 2014-09-19 → 2014-09-25 (+6d) |  | 156d → 152d | 36d → 27d |  |  |
| 6 | Реализация устройств ШУЗ | 2014-11-10 → 2014-11-03 (-7d) | 2014-11-18 → 2014-11-11 (-7d) |  | 0d → 5d |  | constraint none → start no earlier than 2014-11-03 |
| 7 | Доработка логики срабатывания | 2014-11-19 → 2014-11-12 (-7d) | 2014-11-27 → 2014-11-20 (-7d) |  | 0d → 5d |  |  |
| 8 | Испытания на стенде | 2014-11-28 → 2014-11-21 (-7d) | 2014-12-17 → 2014-12-10 (-7d) |  | 0d → 5d |  |  |
| 9 | **Охранная часть** | 2014-09-19 → 2014-11-24 (+66d) | 2014-12-30 → 2015-01-05 (+6d) | 73d → 30.5d | 132d → none |  |  |
| 10 | Сбор требований | 2014-09-19 → 2014-11-20 (+62d) | 2014-09-22 → 2014-11-21 (+60d) |  | 193d → 20.5d |  | constraint none → start no earlier than 2014-11-20 |
| 11 | Реализация | 2014-09-23 → 2014-11-24 (+62d) | 2014-10-06 → 2014-12-05 (+60d) |  | 193d → 20.5d |  |  |
| 13 | **СКД** | 2014-09-19 → 2014-11-10 (+52d) |  | 73d → 37d |  |  |  |
| 14 | Сбор требований | 2014-09-19 → 2014-11-24 (+66d) | 2014-09-22 → 2014-11-25 (+64d) |  | 203d → 142d |  | constraint start no earlier than 2014-09-19 → start no earlier than 2014-11-24 |
| 15 | Реализация | 2014-10-20 → 2014-11-26 (+37d) | 2014-11-07 → 2014-12-16 (+39d) |  | 159d → 142d | none → 14 | constraint finish no earlier than 2014-11-07 → none |

## Version 6 (saved 2014-11-28)

Note of the change: GK users

Last finish stays 2015-07-02.

Changed:

| ID | Task | Start | Finish | Duration | Total float | Other |
| --- | --- | --- | --- | --- | --- | --- |
| 13 | **СКД** | 2014-11-10 → 2014-11-19 (+9d) |  | 37d → 30d |  |  |
| 17 | **МПТ** | 2014-11-10 → 2014-11-19 (+9d) |  | 37d → 30d |  |  |
| 23 | **Автономность работы автоматики** | 2014-11-10 → 2014-12-01 (+21d) | 2014-12-05 → 2014-12-26 (+21d) |  | 149d → 134d |  |
| 24 | Перенос части автоматической логики с ГК на КАУ | 2014-11-10 → 2014-12-01 (+21d) | 2014-11-21 → 2014-12-12 (+21d) |  | 149d → 134d | constraint start no earlier than 2014-11-08 → start no earlier than 2014-12-01; resources Севастьянов → Казаков |
| 25 | Тестирование и отладка | 2014-11-24 → 2014-12-15 (+21d) | 2014-12-05 → 2014-12-26 (+21d) |  | 149d → 134d | resources Севастьянов → Казаков |
| 45 | Разработка документации |  | 2014-11-27 → 2014-12-05 (+8d) | 14d → 20d | 155d → 149d |  |

## Version 7 (saved 2014-12-29)

Note of the change: Tasks

Last finish 2015-07-02 → 2015-07-06 (+4d).

Removed: 55 Сценарии управления, выполняемые на клиенте

Changed:

| ID | Task | Start | Finish | Duration | Total float | Predecessors | Other |
| --- | --- | --- | --- | --- | --- | --- | --- |
| 13 | **СКД** |  | 2014-12-30 → 2015-01-01 (+2d) | 30d → 31.5d | 132d → 132.5d |  |  |
| 17 | **МПТ** |  | 2014-12-30 → 2015-01-01 (+2d) | 30d → 31.5d | 132d → 132.5d |  |  |
| 23 | **Автономность работы автоматики** |  | 2014-12-26 → 2015-01-01 (+6d) | 20d → 23.5d | 134d → 132.5d |  |  |
| 25 | Тестирование и отладка |  | 2014-12-26 → 2015-01-01 (+6d) | 10d → 13.5d | 134d → 132.5d |  |  |
| 51 | **Сценарии управления пользовательским интерфейсом** |  | 2015-07-02 → 2015-07-06 (+4d) | 205d → 207d |  |  |  |
| 55 | Дочерние окна макетов | 2014-11-28 → 2014-11-14 (-14d) | 2014-12-11 → 2014-11-27 (-14d) |  | 0d → 147d | Сценарии управления, выполняемые на клиенте → 54 |  |
| 56 | Связывание элементов управления с аргументами процедуры | 2014-12-12 → 2014-11-28 (-14d) | 2014-12-25 → 2014-12-11 (-14d) |  | 0d → 147d |  |  |
| 57 | Сбор требований к типовым сценариям управления | 2014-12-26 → 2014-12-30 (+4d) | 2015-01-01 → 2015-01-05 (+4d) |  |  | 56 → none | constraint none → start no earlier than 2014-12-30 |
| 58 | Реализация типовых сценариев управления | 2015-01-02 → 2015-01-06 (+4d) | 2015-01-15 → 2015-01-19 (+4d) |  |  |  |  |
| 59 | Тестирование и отладка | 2015-01-16 → 2015-01-20 (+4d) | 2015-02-12 → 2015-02-16 (+4d) |  |  |  |  |
| 60 | Развитие номенклатуры элементов управления и функциий | 2015-02-13 → 2015-02-17 (+4d) | 2015-07-02 → 2015-07-06 (+4d) |  |  |  |  |
| 62 | **Видео** |  | 2015-01-27 → 2015-02-25 (+29d) | 35d → 56d | 112d → 93d |  |  |
| 63 | Разработка требований к сервису RVI-VSS |  | 2014-12-16 → 2014-12-26 (+10d) | 5d → 13d | 112d → 136d |  |  |
| 64 | Реализация взаимодействия с RVI-VSS | 2014-12-17 → 2015-01-15 (+29d) | 2015-01-13 → 2015-02-11 (+29d) |  | 112d → 93d |  | constraint none → start no earlier than 2015-01-15 |
| 65 | Сценарии управления видеоустройствами | 2015-01-14 → 2015-02-12 (+29d) | 2015-01-27 → 2015-02-25 (+29d) |  | 112d → 93d |  |  |
